# IMPLEMENTACIÓN DE SALA DE VIDEOCONFERENCIA

Schedule from MS Project, 2023-05-24 to 2023-08-31, costs in $.

## Calendars

- Videoconferencia: Mon 08:00-14:00, 16:00-18:00; Tue-Fri 09:00-13:00, 15:00-19:00; Sat-Sun off.

## Resources

| Resource | Unit | Rate | Notes |
| --- | --- | --- | --- |
| Coordinador |  | 900 |  |
| Electricista |  | 200 |  |
| Contador |  | 500 |  |
| Técnico de video |  | 350 |  |
| Ingeniero en comunicaciones |  | 500 | Premio por eficiencia |
| Técnico 1 |  | 350 |  |
| Técnico 2 |  | 350 |  |
| Cable eléctrico | rollo | 200 |  |
| Cable Ethernet | rollo | 300 |  |
| Repetidor Ethernet | Pza | 2100 |  |
| PC | Pza | 8000 |  |
| Servidor de red | pza | 60000 |  |
| Aire acondicionado | pza | 40000 |  |
| Equipo de audio | pza | 70000 |  |
| Equipo de video | pza | 50000 |  |

## Schedule

| ID | WBS | Task | Type | Duration | Start | Finish | Predecessors | Baseline start | Baseline finish | Baseline duration | Total slack | Resources | Work | Cost | Baseline cost |
| --- | --- | --- | --- | --- | --- | --- | --- | --- | --- | --- | --- | --- | --- | --- | --- |
| 1 | 1 | **Definición de recursos** |  | 19.67d | 2023-05-24 | 2023-06-20 |  | 2023-05-25 | 2023-06-21 | 20d | 0d |  | 384h | 262,933.33 | 260,000 |
| 2 | 1.1 | Definir recursos legales |  | 4d | 2023-05-24 | 2023-05-29 |  | 2023-05-25 | 2023-05-30 | 4d | 0d | Contador; Coordinador; PC [2 Pza] | 64h | 60,800 | 60,800 |
| 3 | 1.2 | Identificar los recursos humanos |  | 5d | 2023-05-30 | 2023-06-05 | 2 | 2023-05-31 | 2023-06-06 | 5d | 0d | Contador; Coordinador | 80h | 56,000 | 56,000 |
| 4 | 1.3 | Estimar cantidades de recursos materiales |  | 2d | 2023-06-06 | 2023-06-07 | 3 | 2023-06-07 | 2023-06-12 | 4d | 0d | Coordinador; Contador | 32h | 22,400 | 28,800 |
| 5 | 1.4 | Identificar los recursos tecnológicos |  | 6.67d | 2023-06-08 | 2023-06-16 | 4 | 2023-06-13 | 2023-06-19 | 5d | 0d | Coordinador; Ingeniero en comunicaciones; Técnico 2 | 160h | 93,333.33 | 84,000 |
| 6 | 1.5 | Desarrollar documentación de adquisiciones |  | 2d | 2023-06-16 | 2023-06-20 | 5 | 2023-06-20 | 2023-06-21 | 2d | 0d | Contador; Coordinador; Ingeniero en comunicaciones | 48h | 30,400 | 30,400 |
| 7 | 1.6 | Fin etapa 1 | milestone | 0d | 2023-06-20 | 2023-06-20 | 6 | 2023-06-21 | 2023-06-21 | 0d | 0d |  |  |  |  |
| 8 | 2 | **Adecuar lugar** |  | 9d | 2023-06-20 | 2023-07-03 | 1 | 2023-06-22 | 2023-07-04 | 9d | 0d |  | 88h | 136,900 | 113,500 |
| 9 | 2.1 | Realizar la instalación eléctrica |  | 3d | 2023-06-20 | 2023-06-23 |  | 2023-06-22 | 2023-06-26 | 3d | 0d | Cable eléctrico [2 rollo]; Electricista; Técnico 1 | 24h | 7,000 | 5,200 |
| 10 | 2.2 | Instalar equipos de aire acondicionado |  | 2d | 2023-06-23 | 2023-06-27 | 9 | 2023-06-27 | 2023-06-28 | 2d | 0d | Aire acondicionado [1 pza]; Técnico 1; Técnico 2 | 32h | 51,200 | 45,600 |
| 11 | 2.3 | Implementar un sistema de comunicaciones |  | 4d | 2023-06-27 | 2023-07-03 | 10 | 2023-06-29 | 2023-07-04 | 4d | 0d | Cable Ethernet [2 rollo]; Repetidor Ethernet [1 Pza]; Servidor de red [1 pza]; Ingeniero en comunicaciones | 32h | 78,700 | 62,700 |
| 12 | 2.4 | Fin etapa 2 | milestone | 0d | 2023-07-03 | 2023-07-03 | 11 | 2023-07-04 | 2023-07-04 | 0d | 0d |  |  |  |  |
| 13 | 3 | **Equipamiento** |  | 16d | 2023-07-03 | 2023-07-25 | 8 | 2023-07-05 | 2023-07-26 | 16d | 0d |  |  | 120,000 | 120,000 |
| 14 | 3.1 | Idntificar requerimientos de audio |  | 3d | 2023-07-03 | 2023-07-06 |  | 2023-07-05 | 2023-07-07 | 3d | 0d | Equipo de audio [1 pza] |  | 70,000 | 70,000 |
| 15 | 3.2 | Identificar requerimientos de video |  | 6d | 2023-07-06 | 2023-07-14 | 14 | 2023-07-10 | 2023-07-17 | 6d | 0d | Equipo de video [1 pza] |  | 50,000 | 50,000 |
| 16 | 3.3 | Realizar enlace de datos |  | 5d | 2023-07-14 | 2023-07-21 | 15 | 2023-07-18 | 2023-07-24 | 5d | 0d |  |  |  |  |
| 17 | 3.4 | Instalar y adecuar equipo y mobiliario |  | 2d | 2023-07-21 | 2023-07-25 | 16 | 2023-07-25 | 2023-07-26 | 2d | 0d |  |  |  |  |
| 18 | 3.5 | Fin de etapa 3 | milestone | 0d | 2023-07-25 | 2023-07-25 | 17 |  |  |  | 0d |  |  |  |  |
| 19 | 4 | **Pruebas** |  | 10d | 2023-07-25 | 2023-08-08 | 13 | 2023-07-27 | 2023-08-09 | 10d | 0d |  | 88h | 39,600 |  |
| 20 | 4.1 | Realizar pruebas de los equipos |  | 3d | 2023-07-25 | 2023-07-28 |  | 2023-07-27 | 2023-07-31 | 3d | 0d | Técnico 1 | 24h | 8,400 |  |
| 21 | 4.2 | Realizar pruebas de video |  | 2d | 2023-07-28 | 2023-08-01 | 20 | 2023-08-01 | 2023-08-02 | 2d | 0d | Técnico 2 | 16h | 5,600 |  |
| 22 | 4.3 | Realizar prubeas de audio |  | 1d | 2023-07-28 | 2023-07-31 | 21SS | 2023-08-01 | 2023-08-01 | 1d | 0d |  |  |  |  |
| 23 | 4.4 | Realizar pruebas de comunicaciones |  | 2d | 2023-07-31 | 2023-08-02 | 22 | 2023-08-02 | 2023-08-03 | 2d | 0d | Coordinador | 16h | 14,400 |  |
| 24 | 4.5 | Realizar pruebas de enlace de datos |  | 4d | 2023-08-02 | 2023-08-08 | 23 | 2023-08-04 | 2023-08-09 | 4d | 0d | Técnico 1 | 32h | 11,200 |  |
| 25 | 4.6 | Fin etapa 4 | milestone | 0d | 2023-08-08 | 2023-08-08 | 24 | 2023-08-09 | 2023-08-09 | 0d | 0d |  |  |  |  |

Notes:
- 9: Iniciamos

| ID | WBS | Task | Type | Duration | Start | Finish | Predecessors | Baseline start | Baseline finish | Baseline duration | Total slack | Constraint | Resources | Work | Cost | Baseline cost |
| --- | --- | --- | --- | --- | --- | --- | --- | --- | --- | --- | --- | --- | --- | --- | --- | --- |
| 26 | 5 | **Capacitación** |  | 15d | 2023-08-08 | 2023-08-29 | 19 | 2023-08-10 | 2023-08-30 | 15d | 0d |  |  | 160h | 88,000 | 32,000 |
| 27 | 5.1 | Realizar capacitación de audio |  | 5d | 2023-08-08 | 2023-08-15 |  | 2023-08-10 | 2023-08-16 | 5d | 0d |  | Técnico 1 | 40h | 14,000 |  |
| 28 | 5.2 | Realizar capacitación de video |  | 5d | 2023-08-15 | 2023-08-22 | 27 | 2023-08-17 | 2023-08-23 | 5d | 0d |  | Técnico 1 | 40h | 14,000 |  |
| 29 | 5.3 | Realizar capacitación de comunicaciones |  | 5d | 2023-08-22 | 2023-08-29 | 28 | 2023-08-24 | 2023-08-30 | 5d | 0d |  | PC [4 Pza]; Técnico 1; Técnico 2 | 80h | 60,000 | 32,000 |
| 30 | 5.4 | Fin etapa 4 | milestone | 0d | 2023-08-29 | 2023-08-29 | 29 | 2023-08-30 | 2023-08-30 | 0d | 0d |  |  |  |  |  |
| 31 | 6 | **Informe** |  | 1.38d | 2023-08-29 | 2023-08-31 | 26 | 2023-08-31 | 2023-09-01 | 1.38d | 0d |  |  |  |  |  |
| 32 | 6.1 | Informe 1 |  | 1h | 2023-08-29 | 2023-08-29 |  | 2023-08-31 | 2023-08-31 | 1h | 0d | start no earlier than 2023-05-26 |  |  |  |  |
| 33 | 6.2 | Informe 2 |  | 1h | 2023-08-29 | 2023-08-29 | 32 | 2023-08-31 | 2023-08-31 | 1h | 0d | start no earlier than 2023-06-02 |  |  |  |  |
| 34 | 6.3 | Informe 3 |  | 1h | 2023-08-29 | 2023-08-30 | 33 | 2023-08-31 | 2023-08-31 | 1h | 0d | start no earlier than 2023-06-09 |  |  |  |  |
| 35 | 6.4 | Informe 4 |  | 1h | 2023-08-30 | 2023-08-30 | 34 | 2023-08-31 | 2023-08-31 | 1h | 0d | start no earlier than 2023-06-16 |  |  |  |  |
| 36 | 6.5 | Informe 5 |  | 1h | 2023-08-30 | 2023-08-30 | 35 | 2023-08-31 | 2023-08-31 | 1h | 0d | start no earlier than 2023-06-23 |  |  |  |  |
| 37 | 6.6 | Informe 6 |  | 1h | 2023-08-30 | 2023-08-30 | 36 | 2023-08-31 | 2023-08-31 | 1h | 0d | start no earlier than 2023-06-30 |  |  |  |  |
| 38 | 6.7 | Informe 7 |  | 1h | 2023-08-30 | 2023-08-30 | 37 | 2023-08-31 | 2023-08-31 | 1h | 0d | start no earlier than 2023-07-07 |  |  |  |  |
| 39 | 6.8 | Informe 8 |  | 1h | 2023-08-30 | 2023-08-30 | 38 | 2023-08-31 | 2023-08-31 | 1h | 0d | start no earlier than 2023-07-14 |  |  |  |  |
| 40 | 6.9 | Informe 9 |  | 1h | 2023-08-30 | 2023-08-30 | 39 | 2023-09-01 | 2023-09-01 | 1h | 0d | start no earlier than 2023-07-21 |  |  |  |  |
| 41 | 6.10 | Informe 10 |  | 1h | 2023-08-30 | 2023-08-30 | 40 | 2023-09-01 | 2023-09-01 | 1h | 0d | start no earlier than 2023-07-28 |  |  |  |  |
| 42 | 6.11 | Informe 11 |  | 1h | 2023-08-30 | 2023-08-31 | 41 | 2023-09-01 | 2023-09-01 | 1h | 0d | start no earlier than 2023-08-04 |  |  |  |  |
| 43 | 7 | FIN PROYECTO | milestone | 0d | 2023-08-31 | 2023-08-31 | 31 | 2023-09-01 | 2023-09-01 | 0d | 0d |  |  |  |  |  |
